# Vertex Project Calendar

Schedule from MS Project, 2008-02-06 to 2008-10-14.
ArtinSoft

## Calendars

- Standard: Mon-Fri 08:00-12:00, 13:00-17:00; Sat-Sun off. Exceptions (off unless hours are given): 2008-03-20 to 2008-03-21, 2008-04-11, 2008-05-01, 2008-07-25, 2008-08-15, 2008-09-15.

## Resources

| Resource |
| --- |
| Vertex |
| AIS |
| Artinsoft |

## Schedule

| ID | WBS | Task | Type | Duration | Start | Finish | Predecessors | Total slack | Free slack | Constraint | Resources | Work |
| --- | --- | --- | --- | --- | --- | --- | --- | --- | --- | --- | --- | --- |
| 1 | 1 | **Phase 1: Omiga Migration to Functional Equivalence** |  | 173d | 2008-02-06 | 2008-10-14 |  | 0d |  |  |  | 2312h |
| 2 | 1.1 | **Project Initiation** |  | 2d | 2008-02-06 | 2008-02-07 |  | 2d |  |  |  | 32h |
| 3 | 1.1.1 | Project Kick-off |  | 1d | 2008-02-06 | 2008-02-06 |  | 2d | 0d |  | Vertex; Artinsoft | 16h |
| 4 | 1.1.2 | Quality Assurance Coordination Meeting |  | 1d | 2008-02-07 | 2008-02-07 | 3 | 171d |  |  | Vertex; Artinsoft | 16h |
| 5 | 1.2 | Migration Tool Customization |  | 30d | 2008-02-07 | 2008-03-19 | 3 | 2d |  |  | Artinsoft | 240h |
| 6 | 1.3 | Test Cases Generation |  | 25d | 2008-02-18 | 2008-03-25 | 7FF | 140d |  |  | Vertex | 200h |
| 7 | 1.4 | Test Cases Delivery (6 weeks after Source Code Collection) | milestone | 0d | 2008-03-25 | 2008-03-25 | 10FS+5w | 0d |  |  | Vertex |  |
| 8 | 1.5 | Test Cases Acceptance |  | 10d | 2008-03-17 | 2008-04-01 | 7FS-5d | 5d |  |  | Artinsoft | 80h |
| 9 | 1.6 | **Automatic Migration** |  | 35d | 2008-02-18 | 2008-04-08 |  | 0d |  |  |  | 160h |
| 10 | 1.6.1 | Source Code Collection | milestone | 0d | 2008-02-18 | 2008-02-18 |  | 0d |  | start no earlier than 2008-02-18 | Vertex |  |
| 11 | 1.6.2 | Source Code Analysis and Setup |  | 10d | 2008-02-18 | 2008-02-29 | 10 | 15d |  |  | Artinsoft | 80h |
| 12 | 1.6.3 | Green Code Generation |  | 5d | 2008-03-26 | 2008-04-01 | 5, 11, 7 | 0d |  |  | Artinsoft | 40h |
| 13 | 1.6.4 | Green Code Delivery | milestone | 0d | 2008-04-01 | 2008-04-01 | 12 | 0d |  |  | Artinsoft |  |
| 14 | 1.6.5 | Green Code Review |  | 5d | 2008-04-02 | 2008-04-08 | 13 | 0d |  |  | Vertex | 40h |
| 15 | 1.7 | **Coding and Developer Testing** |  | 60d | 2008-04-09 | 2008-07-03 |  | 0d |  |  |  | 480h |
| 16 | 1.7.1 | Migrated Source Code Compilation |  | 30d | 2008-04-09 | 2008-05-22 | 8, 14 | 0d |  |  | Artinsoft | 240h |
| 17 | 1.7.2 | Developer Testing |  | 30d | 2008-05-23 | 2008-07-03 | 16 | 0d |  |  | Artinsoft | 240h |
| 18 | 1.7.3 | Migrated Application Source Code Delivery | milestone | 0d | 2008-07-03 | 2008-07-03 | 17 | 0d |  |  | Artinsoft |  |
| 19 | 1.8 | **Quality Assurance** |  | 60d | 2008-07-04 | 2008-09-30 |  | 0d |  |  |  | 1120h |
| 20 | 1.8.1 | Supplier Testing |  | 40d | 2008-07-04 | 2008-09-01 | 18, 8 | 0d |  |  | Artinsoft | 320h |
| 21 | 1.8.2 | Bug Fixing |  | 40d | 2008-07-04 | 2008-09-01 | 18, 20SS | 0d |  |  | Artinsoft | 320h |
| 22 | 1.8.3 | Supplier Testing completion | milestone | 0d | 2008-09-01 | 2008-09-01 | 20, 21 | 0d |  |  | Artinsoft |  |
| 23 | 1.8.4 | Acceptance Testing Support |  | 30d | 2008-08-19 | 2008-09-30 | 22FS-10d | 10d |  |  | Artinsoft | 240h |
| 24 | 1.8.5 | Acceptance Testing |  | 30d | 2008-08-19 | 2008-09-30 | 22FS-10d | 10d |  |  | Vertex | 240h |
| 25 | 1.9 | Functional Equivalence Acceptance and Delivery | milestone | 0d | 2008-10-14 | 2008-10-14 | 22FS+30d | 0d |  | start no earlier than 2008-08-25 | Vertex |  |

| ID | WBS | Task | Type | Duration | Start | Finish | Predecessors | Total slack | Free slack | Resources | Work |
| --- | --- | --- | --- | --- | --- | --- | --- | --- | --- | --- | --- |
| 26 | 2 | **Phase 2: Performance Tuning** |  | 20d | 2008-09-02 | 2008-09-30 | 22 | 10d |  |  | 480h |
| 27 | 2.1 | Performance Testing |  | 20d | 2008-09-02 | 2008-09-30 |  | 10d | 0d | Vertex | 160h |
| 28 | 2.2 | Performance Tuning |  | 20d | 2008-09-02 | 2008-09-30 | 27SS | 10d | 0d | Artinsoft; Vertex | 320h |
| 29 | 2.3 | Project Closing | milestone | 0d | 2008-09-30 | 2008-09-30 | 27, 28 | 10d |  | Artinsoft; Vertex |  |
